# Projeto Institucional V1.0.0

Schedule from MS Project, 2025-01-01 to 2025-03-13.

## Calendars

- Padrão: Mon-Fri 07:30-11:30, 12:30-16:45; Sat-Sun off. Exceptions (off unless hours are given): 2025-01-11 to 2025-01-12 (Recesso Empresarial ( Folga )), 2025-02-12 to 2025-02-13 (Carnaval (recesso)), 2025-02-14 14:00-16:00 (Quarta-Feira Cinzas).

## Schedule

| ID | WBS | Task | Type | Duration | Start | Finish | Predecessors | Total slack | Free slack | Constraint | Deadline |
| --- | --- | --- | --- | --- | --- | --- | --- | --- | --- | --- | --- |
| 1 | 1 | Início do Projeto | milestone, manual | 0d | 2025-01-01 | 2025-01-01 |  |  |  |  |  |
| 2 | 2 | **Etapa 1 - Criação** |  | 5.5d | 2025-01-01 | 2025-01-08 |  | -5.44d | 0d |  |  |
| 3 | 2.1 | Fazer Brainstorm de criação |  | 4h | 2025-01-01 | 2025-01-01 | 1 | -5.44d | 0d |  |  |
| 4 | 2.2 | Criar Roteiro |  | 3d | 2025-01-01 | 2025-01-06 | 1, 3 | -5.44d | 0d |  |  |
| 5 | 2.3 | Criar Storyboard |  | 2d | 2025-01-06 | 2025-01-08 | 4 | -5.44d | 0d |  |  |
| 6 | 2.4 | Término Etapa 1 | milestone | 0d | 2025-01-08 | 2025-01-08 | 5 | -5.44d | 0d |  |  |
| 7 | 3 | **Etapa 2 - Planejamento** |  | 10.5d | 2025-01-08 | 2025-01-22 |  | -5.44d | 0d |  |  |
| 8 | 3.1 | Criar Orçamento e Planejamento Financeiro |  | 2d | 2025-01-08 | 2025-01-10 | 6 | -5.44d | 0d |  |  |
| 9 | 3.2 | Selecionar Casting |  | 3d | 2025-01-10 | 2025-01-15 | 8 | -5.44d | 0d |  |  |
| 10 | 3.3 | Selecionar Locações de Filmagem |  | 2d | 2025-01-10 | 2025-01-14 | 9SS | -5.44d | 0d |  |  |
| 11 | 3.4 | Definir Equipamentos de Filmagem |  | 4h | 2025-01-14 | 2025-01-14 | 10 | -5.44d | 0d |  |  |
| 12 | 3.5 | Definir Equipe de Filmagem |  | 4h | 2025-01-14 | 2025-01-14 | 11FF | -5.44d | 0d |  |  |
| 13 | 3.6 | Definir Equipamentos de Audio |  | 4h | 2025-01-14 | 2025-01-15 | 12 | -5.44d | 0d |  |  |
| 14 | 3.7 | Definir Equipe de Audio |  | 4h | 2025-01-14 | 2025-01-15 | 13FF | -5.44d | 0d |  |  |
| 15 | 3.8 | Definir Equipamentos de Iluminação |  | 4h | 2025-01-15 | 2025-01-15 | 14 | -5.44d | 0d |  |  |
| 16 | 3.9 | Definir Equipe de Iluminação |  | 4h | 2025-01-15 | 2025-01-16 | 15 | -5.44d | 0d |  |  |
| 17 | 3.10 | Planejar Produção e Operação |  | 2.5d | 2025-01-16 | 2025-01-20 | 16 | -5.44d | 0d |  |  |
| 18 | 3.11 | Planejar Montagem de Cenários |  | 2d | 2025-01-16 | 2025-01-20 | 16 | -4.94d | 0d |  |  |
| 19 | 3.12 | Planejar Figurino |  | 2d | 2025-01-16 | 2025-01-20 | 16 | -4.94d | 0d |  |  |
| 20 | 3.13 | Planejar Deslocamento das Equipes |  | 0.5d | 2025-01-16 | 2025-01-16 | 16 | -3.44d | 0d |  |  |
| 21 | 3.14 | Definir Cronograma de Filmagens |  | 2d | 2025-01-20 | 2025-01-22 | 20, 18, 19, 17 | -5.44d | 0d |  | 2025-01-23 |
| 22 | 3.15 | Definir Cronograma de Edição |  | 2d | 2025-01-20 | 2025-01-22 | 21SS | -5.44d | 0d |  |  |
| 23 | 3.16 | Término Etapa 2 | milestone | 0d | 2025-01-22 | 2025-01-22 | 22 | -5.44d | 0d |  |  |
| 24 | 4 | **Etapa 3 - Execução** |  | 19.97d | 2025-01-22 | 2025-02-24 |  | -5.44d | 0d |  |  |
| 25 | 4.1 | Contratar Serviços e Equipes |  | 8d | 2025-01-22 | 2025-02-03 | 23 | -5.44d | 0d |  | 2025-01-24 |
| 26 | 4.2 | Realizar Ajustes do Local |  | 3d | 2025-01-22 | 2025-01-27 | 25SS | 0.69d | 0d |  |  |
| 27 | 4.3 | Montar Cenário |  | 2d | 2025-01-27 | 2025-01-29 | 26 | 0.69d | 0d |  |  |
| 28 | 4.4 | Montar Equipamentos de Filmagem |  | 4h | 2025-01-29 | 2025-01-29 | 27 | 0.69d | 0d |  |  |
| 29 | 4.5 | Montar Equipamentos de Audio |  | 4h | 2025-01-29 | 2025-01-29 | 27 | 0.69d | 0d |  |  |
| 30 | 4.6 | Montar Equipamentos de Iluminação |  | 4h | 2025-01-29 | 2025-01-29 | 27 | 0.69d | 0d |  |  |
| 31 | 4.7 | Testar Equipamentos |  | 4h | 2025-01-29 | 2025-01-30 | 28, 29, 30 | 0.69d |  |  |  |
| 32 | 4.8 | Realizar Ensaios |  | 3d | 2025-01-31 | 2025-02-04 | 31 | 0d |  | must start on 2025-01-31 |  |
| 33 | 4.9 | Realizar Filmagens |  | 8d | 2025-02-06 | 2025-02-21 |  | 0d |  | must start on 2025-02-06 |  |
| 34 | 4.10 | Desmontar Local |  | 1d | 2025-02-21 | 2025-02-24 | 33 | 0d |  |  |  |
| 35 | 4.11 | Limpar Local |  | 0.5d | 2025-02-24 | 2025-02-24 | 34 | 0d |  |  |  |
| 36 | 4.12 | Término Etapa 3 | milestone | 0d | 2025-02-24 | 2025-02-24 | 35 | 0d |  |  |  |

Notes:
- 3: Objetivos: / * Definir conceito e ideia geral da campanha / * Definir ações / * Definir elenco / OBS: A cria�‹o da campanha deve se adequar a realidade de verba definida em reunião conjunta com a equipe de planejamento e cliente, vide documento "Briefing" em anexo.

| ID | WBS | Task | Type | Duration | Start | Finish | Predecessors | Total slack |
| --- | --- | --- | --- | --- | --- | --- | --- | --- |
| 37 | 5 | **Etapa 4 - Pós Produção** |  | 13.5d | 2025-02-24 | 2025-03-13 |  | 0d |
| 38 | 5.1 | Decupar Material |  | 1d | 2025-02-24 | 2025-02-25 | 36 | 0d |
| 39 | 5.2 | Editar Vídeo |  | 5d | 2025-02-25 | 2025-03-04 | 38 | 0d |
| 40 | 5.3 | Inserir Efeitos Especiais |  | 5d | 2025-03-04 | 2025-03-11 | 39 | 0d |
| 41 | 5.4 | Realizar Tratamento e Correções |  | 2d | 2025-03-11 | 2025-03-13 | 40 | 0d |
| 42 | 5.5 | Renderizar |  | 4h | 2025-03-13 | 2025-03-13 | 41 | 0d |
| 43 | 5.6 | Entrega do Vídeo | milestone | 0d | 2025-03-13 | 2025-03-13 | 42 | 0d |
| 44 | 5.7 | Término do Projeto | milestone | 0d | 2025-03-13 | 2025-03-13 | 43 | 0d |
